# Lab5

Schedule from MS Project, 2020-06-08 to 2020-12-29, status date 2020-12-24, costs in $, A marks actual dates.
University of Wollongong

## Calendars

- Standard: Mon-Fri 08:00-12:00, 13:00-17:00; Sat-Sun off.

## Resources

| Resource | Rate |
| --- | --- |
| Gong Adam | 20 |
| Hunjan Jaireet | 20 |
| Hye Saamir | 20 |
| Jaswinder Kaur | 25 |
| Kaur Kirandeep | 25 |
| Kaur Mushkanpreet | 25 |
| Kumar Kishen | 30 |
| Le Quang Long | 30 |

## Schedule

| ID | WBS | Task | Type | Duration | Start | Finish | Predecessors | Complete | Remaining | Baseline start | Baseline finish | Baseline duration | Baseline 1 start | Baseline 1 finish | Total slack | Free slack | Constraint | Resources | Work | Actual work | Cost | Baseline cost | Actual cost |
| --- | --- | --- | --- | --- | --- | --- | --- | --- | --- | --- | --- | --- | --- | --- | --- | --- | --- | --- | --- | --- | --- | --- | --- |
| 1 | 1 | **Summary tasks** |  | 147d | 2020-06-08 A | 2020-12-29 |  | 50% | 73.5d | 2020-06-08 | 2021-04-13 | 221.88d |  |  | 0d |  |  |  | 6024h | 3012h | 198,345 | 300,025 | 99,172.5 |
| 2 | 1.1 | **Requirments** |  | 42d | 2020-06-08 A | 2020-08-04 |  | 50% | 21d | 2020-06-08 | 2020-08-28 | 60d | 2020-04-22 | 2020-08-25 | 0d |  |  |  | 1840h | 920h | 57,090 | 99,210 | 28,545 |
| 3 | 1.1.1 | Gather user Requirments |  | 19d | 2020-06-08 A | 2020-07-02 |  | 50% | 9.5d | 2020-06-08 | 2020-07-17 | 30d | 2020-04-22 | 2020-06-02 | 2d | 0d | start no earlier than 2020-06-07 | Gong Adam; Hunjan Jaireet; Hye Saamir; Jaswinder Kaur; Kaur Kirandeep | 760h | 380h | 24,325 | 34,005 | 12,162.5 |
| 4 | 1.1.2 | Analyze youtube videos data and metadata |  | 23d | 2020-07-03 A | 2020-08-04 | 3 | 50% | 11.5d | 2020-07-20 | 2020-08-28 | 30d | 2020-06-03 | 2020-07-14 | 0d |  |  | Hunjan Jaireet; Hye Saamir; Jaswinder Kaur; Kaur Kirandeep; Kaur Mushkanpreet | 920h | 460h | 28,765 | 35,205 | 14,382.5 |
| 5 | 1.1.3 | Analyze youtube API |  | 4d | 2020-07-03 A | 2020-07-08 | 3 | 50% | 2d | 2020-07-20 | 2020-08-28 | 30d | 2020-07-15 | 2020-08-25 | 19d | 0d |  | Hye Saamir; Jaswinder Kaur; Kaur Kirandeep; Kaur Mushkanpreet; Le Quang Long | 160h | 80h | 4,000 | 30,000 | 2,000 |
| 6 | 1.1.4 | Finish requirements moving on to design | milestone | 0d | 2020-07-08 A | 2020-07-08 | 5 | 50% | 0d | 2020-08-28 | 2020-08-28 | 0d | 2020-08-25 | 2020-08-25 | 19d |  |  | Jaswinder Kaur; Kaur Kirandeep; Kaur Mushkanpreet |  |  |  |  |  |
| 7 | 1.2 | **Design** |  | 31d | 2020-08-05 A | 2020-09-16 | 2 | 50% | 15.5d | 2020-08-31 | 2020-10-16 | 34.88d | 2020-08-26 | 2021-02-09 | 0d |  |  |  | 1704h | 852h | 47,730 | 67,290 | 23,865 |
| 8 | 1.2.1 | Design Data gathering algorithm |  | 4.88d | 2020-08-05 A | 2020-08-11 | 6 | 50% | 2.44d | 2020-08-31 | 2020-09-04 | 4.88d | 2020-08-26 | 2020-10-06 | 9.5d | 0d |  | Kaur Mushkanpreet; Kumar Kishen; Le Quang Long; Gong Adam; Hunjan Jaireet; Hye Saamir; Jaswinder Kaur; Kaur Kirandeep | 312h | 156h | 7,605 | 7,605 | 3,802.5 |
| 9 | 1.2.2 | Desgin request handler and data handler |  | 18d | 2020-08-24 A | 2020-09-16 | 3 | 50% | 9d | 2020-08-31 | 2020-10-09 | 30d | 2020-10-07 | 2020-11-17 | 0d |  | start no earlier than 2020-08-23 | Gong Adam; Hye Saamir; Kaur Kirandeep | 432h | 216h | 9,360 | 15,600 | 4,680 |
| 10 | 1.2.3 | Design UI/UX for desktop and mobile |  | 21d | 2020-08-05 A | 2020-09-02 | 5 | 50% | 10.5d | 2020-08-31 | 2020-10-14 | 33d | 2020-11-18 | 2020-12-29 | 10d |  |  | Hunjan Jaireet; Jaswinder Kaur; Kaur Mushkanpreet | 504h | 252h | 11,760 | 18,480 | 5,880 |
| 11 | 1.2.4 | Design customers account management system |  | 19d | 2020-08-11 A | 2020-09-07 | 8 | 50% | 9.5d | 2020-09-04 | 2020-10-16 | 30d | 2020-12-30 | 2021-02-09 | 7.12d | 0d |  | Hye Saamir; Kaur Kirandeep; Le Quang Long | 456h | 228h | 11,400 | 18,000 | 5,700 |
| 12 | 1.2.5 | Finish design and move on implementation | milestone | 0d | 2020-09-07 A | 2020-09-07 | 11 | 50% | 0d | 2020-10-16 | 2020-10-16 | 0d | 2021-02-09 | 2021-02-09 | 7.12d |  |  | Jaswinder Kaur; Kaur Mushkanpreet; Le Quang Long |  |  |  |  |  |
| 13 | 1.3 | **Implementation** |  | 72d | 2020-09-17 A | 2020-12-25 | 7 | 50% | 36d | 2020-10-16 | 2021-04-02 | 120d | 2021-02-10 | 2021-09-07 | 0d |  |  |  | 2432h | 1216h | 68,960 | 105,560 | 34,480 |
| 14 | 1.3.1 | Code the algorithm |  | 17d | 2020-09-17 A | 2020-10-09 |  | 50% | 8.5d | 2020-10-16 | 2020-11-27 | 30d | 2021-02-10 | 2021-03-23 | 8.5d | 0d |  | Kaur Mushkanpreet; Le Quang Long; Jaswinder Kaur | 408h | 204h | 10,880 | 19,200 | 5,440 |
| 15 | 1.3.2 | Code the handler |  | 22d | 2020-10-12 A | 2020-11-10 | 14 | 50% | 11d | 2020-11-27 | 2021-01-08 | 30d | 2021-03-24 | 2021-05-04 | 33d |  |  | Jaswinder Kaur; Kaur Kirandeep; Kaur Mushkanpreet; Kumar Kishen | 704h | 352h | 18,480 | 25,200 | 9,240 |
| 16 | 1.3.3 | Setup server with designed UI/UX |  | 17d | 2020-10-12 A | 2020-11-03 | 14 | 50% | 8.5d | 2020-11-27 | 2021-01-08 | 30d | 2021-05-05 | 2021-06-15 | 11.5d | 0d |  | Hunjan Jaireet; Kaur Kirandeep; Le Quang Long | 408h | 204h | 10,200 | 18,000 | 5,100 |
| 17 | 1.3.4 | Setup database system for account |  | 23d | 2020-11-04 A | 2020-12-04 | 16 | 50% | 11.5d | 2021-01-08 | 2021-02-19 | 30d | 2021-06-16 | 2021-07-27 | 7.5d | 0d |  | Jaswinder Kaur; Kumar Kishen; Le Quang Long | 552h | 276h | 15,640 | 20,400 | 7,820 |
| 18 | 1.3.5 | Stress test the system |  | 15d | 2020-12-07 A | 2020-12-25 | 17 | 50% | 7.5d | 2021-02-19 | 2021-04-02 | 30d | 2021-07-28 | 2021-09-07 | 0d |  |  | Hye Saamir; Jaswinder Kaur; Kumar Kishen | 360h | 180h | 9,000 | 18,000 | 4,500 |
| 19 | 1.3.6 | Finish and Move to deployment | milestone | 0d | 2020-12-25 A | 2020-12-25 | 18 | 50% | 0d | 2021-04-02 | 2021-04-02 | 0d | 2021-09-07 | 2021-09-07 | 0d |  |  | Gong Adam; Kaur Kirandeep; Le Quang Long |  |  |  |  |  |
| 20 | 1.4 | **Deployment** |  | 2d | 2020-12-28 A | 2020-12-29 | 13 | 50% | 1d | 2021-04-02 | 2021-04-13 | 7d | 2021-09-08 | 2021-09-16 | 0d |  |  |  | 48h | 24h | 16,960 | 20,360 | 8,480 |
| 21 | 1.4.1 | Deploy and monitor the project for a week |  | 2d | 2020-12-28 A | 2020-12-29 |  | 50% | 1d | 2021-04-02 | 2021-04-13 | 7d | 2021-09-08 | 2021-09-16 | 0d |  |  | Jaswinder Kaur; Kumar Kishen; Le Quang Long | 48h | 24h | 1,360 | 4,760 | 680 |
| 22 | 1.4.2 | Finalize and release the product | milestone | 0d | 2020-12-29 A | 2020-12-29 | 21 | 50% | 0d | 2021-04-13 | 2021-04-13 | 0d | 2021-09-16 | 2021-09-16 | 0d |  |  | Jaswinder Kaur; Kaur Kirandeep; Kaur Mushkanpreet |  |  |  |  |  |
